# Simple Project Plan

Schedule from MS Project, 2019-09-02 to 2019-10-29, A marks actual dates.

## Calendars

- Standard: Mon-Fri 08:00-12:00, 13:00-17:00; Sat-Sun off.

## Resources

| Resource |
| --- |
| Vincent |
| Claire |
| Kelly |
| Tom |

## Schedule

| ID | WBS | Task | Type | Duration | Start | Finish | Predecessors | Complete | Remaining | Total slack | Free slack | Constraint | Resources | Work | Actual work |
| --- | --- | --- | --- | --- | --- | --- | --- | --- | --- | --- | --- | --- | --- | --- | --- |
| 1 | 1 | **需求** |  | 9d | 2019-09-02 A | 2019-09-12 A |  | 100% |  |  |  |  |  | 88h | 88h |
| 2 | 1.1 | 需求文档 |  | 2d | 2019-09-02 A | 2019-09-03 A |  | 100% |  |  |  | finish no earlier than 2019-09-03 | Vincent | 16h | 16h |
| 3 | 1.2 | UI原型 |  | 3d | 2019-09-04 A | 2019-09-06 A | 2 | 100% |  |  |  | finish no earlier than 2019-09-06 | Claire; Vincent; Tom | 72h | 72h |
| 4 | 1.3 | 需求文档及UI原型修改 |  | 2d | 2019-09-11 A | 2019-09-12 A | 3 | 100% |  |  |  | finish no earlier than 2019-09-12 |  |  |  |
| 5 | 1.4 | 需求阶段完成 | milestone | 0d | 2019-09-06 A | 2019-09-06 A | 4 | 100% |  |  |  | start no earlier than 2019-09-06 |  |  |  |
| 6 | 2 | **设计** |  | 2d? | 2019-09-12 A | 2019-09-16 | 1 | 80% | 0.4d? | 3.12d | 1.12d |  |  |  |  |
| 7 | 2.1 | 业务流程图设计 |  | 1d? | 2019-09-13 A | 2019-09-13 A |  | 100% |  |  |  | start no earlier than 2019-09-02 |  |  |  |
| 8 | 2.2 | 数据库设计 | milestone | 0d | 2019-09-12 A | 2019-09-12 A | 5 | 100% |  |  |  | finish no earlier than 2019-09-12 | Vincent |  |  |
| 9 | 2.3 | 设计阶段完成 | milestone | 0d | 2019-09-12 | 2019-09-12 | 8 |  |  | 5.12d | 3.12d | start no earlier than 2019-09-02 |  |  |  |
| 10 | 2.4 | API/模块划分/分级/分工 |  | 1d | 2019-09-16 A | 2019-09-16 | 7 | 60% | 0.4d | 3.12d |  | start no earlier than 2019-09-02 |  |  |  |
| 11 | 3 | **开发** |  | 18.88d | 2019-09-18 | 2019-10-14 | 6 |  |  | 2d |  |  |  | 432h |  |
| 12 | 3.1 | API接口开发 |  | 15d | 2019-09-18 | 2019-10-09 | 9 |  |  | 2d | 0d | start no earlier than 2019-09-18 | Claire; Vincent | 240h |  |
| 13 | 3.2 | 模块开发 |  | 15d | 2019-09-18 | 2019-10-09 | 12SS |  |  | 2d | 0.88d | start no earlier than 2019-09-02 |  |  |  |
| 14 | 3.3 | 前端开发 |  | 15d | 2019-09-18 | 2019-10-09 | 9 |  |  | 2d | 0.88d | start no earlier than 2019-09-18 | Tom | 120h |  |
| 15 | 3.4 | 数据对接 |  | 3d | 2019-10-10 | 2019-10-14 | 12, 14, 13 |  |  | 1.12d | 0d | finish no earlier than 2019-10-14 | Claire; Tom; Vincent | 72h |  |
| 16 | 3.5 | 开发完成 | milestone | 0d | 2019-10-14 | 2019-10-14 | 15 |  |  | 9.12d |  | start no earlier than 2019-09-02 |  |  |  |
| 17 | 4 | **测试** |  | 9.12d | 2019-10-10 | 2019-10-23 | 11SS |  |  | 0d |  |  |  | 184h |  |
| 18 | 4.1 | 模块测试 |  | 3d | 2019-10-10 | 2019-10-14 | 12, 14, 13 |  |  | 6.12d |  | finish no earlier than 2019-10-14 | Kelly | 24h |  |
| 19 | 4.2 | 综合测试/帮助文档 |  | 5d | 2019-10-16 | 2019-10-23 | 15 |  |  | 0d |  | start no earlier than 2019-10-16 | Claire; Kelly; Tom; Vincent | 160h |  |
| 20 | 4.3 | 测试完成 | milestone | 0d | 2019-10-23 | 2019-10-23 | 19 |  |  | 0d |  | start no earlier than 2019-10-11 |  |  |  |
| 21 | 5 | **部署** |  | 1d | 2019-10-23 | 2019-10-24 | 17 |  |  | 0d |  |  |  | 8h |  |
| 22 | 5.1 | 部署 |  | 1d | 2019-10-23 | 2019-10-24 | 20 |  |  | 0d |  | start no earlier than 2019-10-14 | Vincent | 8h |  |
| 23 | 6 | **联测** |  | 2d | 2019-10-24 | 2019-10-28 | 21 |  |  | 0d |  |  |  | 64h |  |
| 24 | 6.1 | 联测 |  | 2d | 2019-10-24 | 2019-10-28 | 22 |  |  | 0d |  | finish no earlier than 2019-10-25 | Claire; Kelly; Tom; Vincent | 64h |  |

Notes:
- 5: 1：需求文档确认 / 2：UI原型确认 / 已确认！
- 9: 完成数据库设计，生成数据字典 / 已完成！
- 10: 0项目内使用 / 1可在特定项目下复用 / 2所有项目可复用
- 16: 功能开发完成(含API接口与客户端数据对接)
- 20: 生成测试用例文档
- 22: 部署完成
- 24: 联测成功

| ID | WBS | Task | Duration | Start | Finish | Predecessors | Total slack | Constraint | Resources | Work |
| --- | --- | --- | --- | --- | --- | --- | --- | --- | --- | --- |
| 25 | 7 | **项目输出** | 1d? | 2019-10-28 | 2019-10-29 | 16 | 0d |  |  | 8h |
| 26 | 7.1 | 项目验收报告 | 1d? | 2019-10-28 | 2019-10-29 | 23 | 0d | start no earlier than 2019-09-02 | Vincent | 8h |
