# Simple Project Plan

Schedule from MS Project, 2019-09-02 to 2019-10-29, A marks actual dates.

## Calendars

- Standard: Mon-Fri 08:00-12:00, 13:00-17:00; Sat-Sun off.

## Resources

| Resource |
| --- |
| Vincent |
| Claire |
| Kelly |
| Tom |

## Schedule

| ID | WBS | Task | Type | Duration | Start | Finish | Predecessors | Complete | Remaining | Total slack | Free slack | Constraint | Resources | Work | Actual work |
| --- | --- | --- | --- | --- | --- | --- | --- | --- | --- | --- | --- | --- | --- | --- | --- |
| 1 | 1 | **需求** |  | 9d | 2019-09-02 A | 2019-09-12 A |  | 100% |  |  |  |  |  | 88h | 88h |
| 2 | 1.1 | 需求文档 |  | 2d | 2019-09-02 A | 2019-09-03 A |  | 100% |  |  |  | finish no earlier than 2019-09-03 | Vincent | 16h | 16h |
| 3 | 1.2 | UI原型 |  | 3d | 2019-09-04 A | 2019-09-06 A | 2 | 100% |  |  |  | finish no earlier than 2019-09-06 | Claire; Vincent; Tom | 72h | 72h |
| 4 | 1.3 | 需求文档及UI原型修改 |  | 2d | 2019-09-11 A | 2019-09-12 A | 3 | 100% |  |  |  | finish no earlier than 2019-09-12 |  |  |  |
| 5 | 1.4 | 需求阶段完成 | milestone | 0d | 2019-09-06 A | 2019-09-06 A | 4 | 100% |  |  |  | start no earlier than 2019-09-06 |  |  |  |
| 6 | 2 | **设计** |  | 2d? | 2019-09-12 A | 2019-09-16 | 1 | 99% | 0d? | 10.12d | 0d |  |  |  |  |
| 7 | 2.1 | 业务流程图设计 |  | 1d? | 2019-09-13 A | 2019-09-13 A |  | 100% |  |  |  | start no earlier than 2019-09-02 |  |  |  |
| 8 | 2.2 | 数据库设计 | milestone | 0d | 2019-09-12 A | 2019-09-12 A | 5 | 100% |  |  |  | finish no earlier than 2019-09-12 | Vincent |  |  |
| 9 | 2.3 | 设计阶段完成 | milestone | 0d | 2019-09-12 | 2019-09-12 | 8 |  |  | 5.12d | 3.12d | start no earlier than 2019-09-02 |  |  |  |
| 10 | 2.4 | API/模块划分/分级/分工 |  | 1d | 2019-09-16 A | 2019-09-16 A | 7 | 100% |  |  |  | start no earlier than 2019-09-02 |  |  |  |
| 11 | 3 | **开发** |  | 21d | 2019-09-17 | 2019-10-15 | 6 |  |  | 9.12d |  |  |  | 640h |  |
| 12 | 3.1 | **API接口开发** |  | 10d | 2019-09-17 | 2019-09-30 | 9 |  |  | 8.12d | 5d |  | Claire; Vincent | 288h |  |
| 13 | 3.1.1 | 基础设置的开发 |  | 2d | 2019-09-17 | 2019-09-18 |  |  |  | 16.12d |  | finish no earlier than 2019-09-18 | Claire; Vincent | 32h |  |
| 14 | 3.1.2 | 对接数据 |  | 1d | 2019-09-19 | 2019-09-19 |  |  |  | 15.12d |  | finish no earlier than 2019-09-19 | Tom; Vincent | 16h |  |
| 15 | 3.1.3 | 报名管理 |  | 2d | 2019-09-20 | 2019-09-23 |  |  |  | 11.12d | 0d | finish no earlier than 2019-09-23 | Vincent | 16h |  |
| 16 | 3.1.4 | 报名审核 |  | 1d | 2019-09-24 | 2019-09-24 | 15 |  |  | 12.12d |  | finish no earlier than 2019-09-24 | Claire | 8h |  |
| 17 | 3.1.5 | 订单管理 |  | 2d | 2019-09-24 | 2019-09-25 | 15 |  |  | 11.12d |  | finish no earlier than 2019-09-25 | Vincent | 16h |  |
| 18 | 3.1.6 | 财务管理 |  | 2d | 2019-09-26 | 2019-09-27 |  |  |  | 8.12d | 0d | finish no earlier than 2019-09-27 | Claire; Vincent | 32h |  |
| 19 | 3.1.7 | 报表 |  | 1d | 2019-09-30 | 2019-09-30 | 18 |  |  | 8.12d |  | finish no earlier than 2019-09-30 | Claire | 8h |  |
| 20 | 3.2 | **前端开发** |  | 10d | 2019-09-17 | 2019-09-30 | 10 |  |  | 8.12d | 7d |  | Tom | 232h |  |
| 21 | 3.2.1 | 用户模块静态页的开发 |  | 2d | 2019-09-17 | 2019-09-18 |  |  |  | 10.25d | 0d | finish no earlier than 2019-09-18 | Tom | 16h |  |
| 22 | 3.2.2 | **数据对接** |  | 8d | 2019-09-19 | 2019-09-30 | 21 |  |  | 8.12d |  |  | Tom | 136h |  |
| 23 | 3.2.2.1 | 用户管理静态页的开发 |  | 1d | 2019-09-19 | 2019-09-19 |  |  |  | 15.12d |  | finish no earlier than 2019-09-19 | Tom | 8h |  |
| 24 | 3.2.2.2 | 基础设置静态页的开发 |  | 2d | 2019-09-19 | 2019-09-20 |  |  |  | 14.12d |  | finish no earlier than 2019-09-20 | Tom | 16h |  |
| 25 | 3.2.2.3 | 业务功能静态页的开发 |  | 6d | 2019-09-23 | 2019-09-30 |  |  |  | 8.12d |  | finish no earlier than 2019-09-30 | Tom | 48h |  |
| 26 | 3.3 | 数据对接 |  | 3d | 2019-10-10 | 2019-10-14 | 12, 20 |  |  | 1.12d | 0d | finish no earlier than 2019-10-14 | Claire; Tom; Vincent | 72h |  |
| 27 | 3.4 | 用户管理独立API开发调用 |  | 6d | 2019-10-08 | 2019-10-15 | 12 |  |  | 9.12d |  | finish no earlier than 2019-10-15 | Vincent | 48h |  |
| 28 | 3.5 | 开发完成 | milestone | 0d | 2019-10-14 | 2019-10-14 | 26 |  |  | 9.12d |  | start no earlier than 2019-09-02 |  |  |  |

Notes:
- 5: 1：需求文档确认 / 2：UI原型确认 / 已确认！
- 9: 完成数据库设计，生成数据字典 / 已完成！
- 10: 0项目内使用 / 1可在特定项目下复用 / 2所有项目可复用
- 28: 功能开发完成(含API接口与客户端数据对接)

| ID | WBS | Task | Type | Duration | Start | Finish | Predecessors | Total slack | Constraint | Resources | Work |
| --- | --- | --- | --- | --- | --- | --- | --- | --- | --- | --- | --- |
| 29 | 4 | **测试** |  | 9.12d | 2019-10-10 | 2019-10-23 | 11SS | 0d |  |  | 184h |
| 30 | 4.1 | 模块测试 |  | 3d | 2019-10-10 | 2019-10-14 | 12, 20 | 6.12d | finish no earlier than 2019-10-14 | Kelly | 24h |
| 31 | 4.2 | 综合测试/帮助文档 |  | 5d | 2019-10-16 | 2019-10-23 | 26 | 0d | start no earlier than 2019-10-16 | Claire; Kelly; Tom; Vincent | 160h |
| 32 | 4.3 | 测试完成 | milestone | 0d | 2019-10-23 | 2019-10-23 | 31 | 0d | start no earlier than 2019-10-11 |  |  |
| 33 | 5 | **部署** |  | 1d | 2019-10-23 | 2019-10-24 | 29 | 0d |  |  | 8h |
| 34 | 5.1 | 部署 |  | 1d | 2019-10-23 | 2019-10-24 | 32 | 0d | start no earlier than 2019-10-14 | Vincent | 8h |
| 35 | 6 | **联测** |  | 2d | 2019-10-24 | 2019-10-28 | 33 | 0d |  |  | 64h |
| 36 | 6.1 | 联测 |  | 2d | 2019-10-24 | 2019-10-28 | 34 | 0d | finish no earlier than 2019-10-25 | Claire; Kelly; Tom; Vincent | 64h |
| 37 | 7 | **项目输出** |  | 1d? | 2019-10-28 | 2019-10-29 | 28 | 0d |  |  | 8h |
| 38 | 7.1 | 项目验收报告 |  | 1d? | 2019-10-28 | 2019-10-29 | 35 | 0d | start no earlier than 2019-09-02 | Vincent | 8h |

Notes:
- 32: 生成测试用例文档
- 34: 部署完成
- 36: 联测成功
